# KM_schedule

Schedule from MS Project, 2015-01-22 to 2015-02-17, A marks actual dates.

## Calendars

- Standard: Mon-Fri 08:00-12:00, 13:00-17:00; Sat-Sun off. Exceptions (off unless hours are given): 2015-01-19 to 2015-02-28 18:00-20:30 (OT ngay thuong, recurring), 2015-01-19 to 2015-02-28 08:00-12:00, 13:00-17:00 (OT thu 7, recurring).

## Resources

| Resource |
| --- |
| DungBQ |
| ThuanDH |
| LuanND |
| HuyHX |
| TuanPM |
| TinhBV |
| NgocLQ |
| DungPT |
| ManhLX |
| All |

## Schedule

| ID | WBS | Task | Duration | Start | Finish | Predecessors | Complete | Constraint | Resources | Work | Actual work |
| --- | --- | --- | --- | --- | --- | --- | --- | --- | --- | --- | --- |
| 1 | 1 | **KM** | 9.88d | 2015-01-22 18:00 A | 2015-02-17 20:00 A |  | 100% |  |  | 767h | 767h |
| 2 | 1.1 | dựng môi trường | 6h | 2015-01-22 18:00 A | 2015-01-24 09:00 A |  | 100% |  | DungBQ | 6h | 6h |
| 3 | 1.2 | **MS01** | 5.94d | 2015-01-22 18:00 A | 2015-02-07 09:30 A |  | 100% |  |  | 657h | 657h |
| 4 | 1.2.1 | **Top page** | 2d | 2015-01-23 18:00 A | 2015-01-28 18:30 A |  | 100% |  |  | 9h | 9h |
| 5 | 1.2.1.1 | Code PHP | 2h | 2015-01-23 18:00 A | 2015-01-23 20:00 A |  | 100% | start no earlier than 2015-01-23 18:00 | ThuanDH | 2h | 2h |
| 6 | 1.2.1.2 | Template PC | 3h | 2015-01-23 20:00 A | 2015-01-24 10:30 A | 5 | 100% |  | ThuanDH | 3h | 3h |
| 7 | 1.2.1.3 | Viet test case | 1h | 2015-01-24 16:30 A | 2015-01-26 18:30 A | 28 | 100% |  | ThuanDH | 1h | 1h |
| 8 | 1.2.1.4 | Test IE | 1h | 2015-01-27 18:00 A | 2015-01-27 19:00 A | 29 | 100% |  |  | 1h | 1h |
| 9 | 1.2.1.5 | Test Android | 1h | 2015-01-27 19:00 A | 2015-01-27 20:00 A | 8 | 100% |  |  | 1h | 1h |
| 10 | 1.2.1.6 | Fix bug & confirm bug | 1h | 2015-01-27 20:00 A | 2015-01-28 18:30 A | 9 | 100% |  |  | 1h | 1h |
| 11 | 1.2.2 | **Must news** | 4.38d | 2015-01-23 18:00 A | 2015-02-03 19:30 A |  | 100% |  | ThuanDH; HuyHX | 163h | 163h |
| 12 | 1.2.2.1 | **Top must news** | 3.38d | 2015-01-23 18:00 A | 2015-01-31 12:00 A |  | 100% |  | HuyHX | 27h | 27h |
| 13 | 1.2.2.1.1 | Code PHP | 3h | 2015-01-23 18:00 A | 2015-01-24 08:30 A |  | 100% | start no earlier than 2015-01-23 18:00 |  |  |  |
| 14 | 1.2.2.1.2 | Template | 3h | 2015-01-24 08:30 A | 2015-01-24 11:30 A | 13 | 100% |  |  |  |  |
| 15 | 1.2.2.1.3 | Viet test case | 2h | 2015-01-27 19:00 A | 2015-01-28 18:30 A | 35 | 100% |  |  |  |  |
| 16 | 1.2.2.1.4 | Test IE | 3h | 2015-01-29 19:00 A | 2015-01-30 19:30 A | 36 | 100% |  |  |  |  |
| 17 | 1.2.2.1.5 | Test Android | 3h | 2015-01-30 19:30 A | 2015-01-31 10:00 A | 16 | 100% |  |  |  |  |
| 18 | 1.2.2.1.6 | Fix bug & confirm bug | 2h | 2015-01-31 10:00 A | 2015-01-31 12:00 A | 17 | 100% |  |  |  |  |
| 19 | 1.2.2.2 | **Top must news theo category** | 3.25d | 2015-01-24 11:30 A | 2015-02-02 19:00 A |  | 100% |  | HuyHX | 26h | 26h |
| 20 | 1.2.2.2.1 | Code PHP | 2h | 2015-01-24 11:30 A | 2015-01-24 14:30 A | 14 | 100% |  |  |  |  |
| 21 | 1.2.2.2.2 | Template | 3h | 2015-01-24 14:30 A | 2015-01-26 18:30 A | 20 | 100% |  |  |  |  |
| 22 | 1.2.2.2.3 | Viet test case | 2h | 2015-01-28 18:30 A | 2015-01-28 20:30 A | 15 | 100% |  |  |  |  |
| 23 | 1.2.2.2.4 | Test IE | 2h | 2015-01-31 13:00 A | 2015-01-31 15:00 A | 18 | 100% |  |  |  |  |
| 24 | 1.2.2.2.5 | Test Android | 2h | 2015-01-31 15:00 A | 2015-01-31 17:00 A | 23 | 100% |  |  |  |  |
| 25 | 1.2.2.2.6 | Fix bug & confirm bug | 1h | 2015-02-02 18:00 A | 2015-02-02 19:00 A | 24 | 100% |  |  |  |  |

| ID | WBS | Task | Duration | Start | Finish | Predecessors | Complete | Constraint | Resources | Work | Actual work |
| --- | --- | --- | --- | --- | --- | --- | --- | --- | --- | --- | --- |
| 26 | 1.2.2.3 | **Bài viết chi tiết của must news** | 2d | 2015-01-24 10:30 A | 2015-01-30 18:30 A |  | 100% |  | ThuanDH | 16h | 16h |
| 27 | 1.2.2.3.1 | Code PHP | 2h | 2015-01-24 10:30 A | 2015-01-24 13:30 A | 6 | 100% |  |  |  |  |
| 28 | 1.2.2.3.2 | Template | 3h | 2015-01-24 13:30 A | 2015-01-24 16:30 A | 27 | 100% |  |  |  |  |
| 29 | 1.2.2.3.3 | Viet test case | 2h | 2015-01-26 18:30 A | 2015-01-26 20:30 A | 7 | 100% |  |  |  |  |
| 30 | 1.2.2.3.4 | Test IE | 2h | 2015-01-28 18:30 A | 2015-01-28 20:30 A | 10 | 100% |  |  |  |  |
| 31 | 1.2.2.3.5 | Test Android | 2h | 2015-01-29 18:00 A | 2015-01-29 20:00 A | 30 | 100% |  |  |  |  |
| 32 | 1.2.2.3.6 | Fix bug & confirm bug | 1h | 2015-01-29 20:00 A | 2015-01-30 18:30 A | 31 | 100% |  |  |  |  |
| 33 | 1.2.2.4 | **Menu phai** | 3d | 2015-01-26 18:30 A | 2015-02-03 19:30 A |  | 100% |  | HuyHX | 24h | 24h |
| 34 | 1.2.2.4.1 | Code PHP | 1h | 2015-01-26 18:30 A | 2015-01-26 19:30 A | 21 | 100% |  |  |  |  |
| 35 | 1.2.2.4.2 | Template | 2h | 2015-01-26 19:30 A | 2015-01-27 19:00 A | 34 | 100% |  |  |  |  |
| 36 | 1.2.2.4.3 | Viet test case | 1h | 2015-01-29 18:00 A | 2015-01-29 19:00 A | 22 | 100% |  |  |  |  |
| 37 | 1.2.2.4.4 | Test IE | 1h | 2015-02-02 19:00 A | 2015-02-02 20:00 A | 25 | 100% |  |  |  |  |
| 38 | 1.2.2.4.5 | Test Android | 1h | 2015-02-02 20:00 A | 2015-02-03 18:30 A | 37 | 100% |  |  |  |  |
| 39 | 1.2.2.4.6 | Fix bug & confirm bug | 1h | 2015-02-03 18:30 A | 2015-02-03 19:30 A | 38 | 100% |  |  |  |  |
| 40 | 1.2.3 | **Must magazine** | 5.62d | 2015-01-23 18:00 A | 2015-02-07 09:30 A |  | 100% |  | NgocLQ; TuanPM | 255.5h | 255.5h |
| 41 | 1.2.3.1 | **Top must magazine** | 4.38d | 2015-01-23 18:00 A | 2015-02-03 19:30 A |  | 100% |  | NgocLQ | 35h | 35h |
| 42 | 1.2.3.1.1 | Code PHP | 3h | 2015-01-23 18:00 A | 2015-01-24 08:30 A |  | 100% | start no earlier than 2015-01-23 18:00 |  |  |  |
| 43 | 1.2.3.1.2 | Template | 4h | 2015-01-24 08:30 A | 2015-01-24 13:30 A | 42 | 100% |  |  |  |  |
| 44 | 1.2.3.1.3 | Viet test case | 4h | 2015-01-28 19:30 A | 2015-01-30 18:30 A | 57 | 100% |  |  |  |  |
| 45 | 1.2.3.1.4 | Test IE | 4h | 2015-01-31 10:00 A | 2015-01-31 15:00 A | 58 | 100% |  |  |  |  |
| 46 | 1.2.3.1.5 | Test Android | 4h | 2015-01-31 15:00 A | 2015-02-02 20:00 A | 45 | 100% |  |  |  |  |
| 47 | 1.2.3.1.6 | Fix bug & confirm bug | 2h | 2015-02-02 20:00 A | 2015-02-03 19:30 A | 46 | 100% |  |  |  |  |
| 48 | 1.2.3.2 | **Bài viết chi tiết của must magezine** | 4.12d | 2015-01-24 13:30 A | 2015-02-05 19:30 A |  | 100% |  | NgocLQ | 33h | 33h |
| 49 | 1.2.3.2.1 | Code PHP | 2h | 2015-01-24 13:30 A | 2015-01-24 15:30 A | 43 | 100% |  |  |  |  |
| 50 | 1.2.3.2.2 | Template | 3h | 2015-01-24 15:30 A | 2015-01-26 19:30 A | 49 | 100% |  |  |  |  |
| 51 | 1.2.3.2.3 | Viet test case | 2h | 2015-01-30 18:30 A | 2015-01-30 20:30 A | 44 | 100% |  |  |  |  |
| 52 | 1.2.3.2.4 | Test IE | 2h | 2015-02-03 19:30 A | 2015-02-04 19:00 A | 47 | 100% |  |  |  |  |
| 53 | 1.2.3.2.5 | Test Android | 2h | 2015-02-04 19:00 A | 2015-02-05 18:30 A | 52 | 100% |  |  |  |  |
| 54 | 1.2.3.2.6 | Fix bug & confirm bug | 1h | 2015-02-05 18:30 A | 2015-02-05 19:30 A | 53 | 100% |  |  |  |  |

| ID | WBS | Task | Duration | Start | Finish | Predecessors | Complete | Constraint | Resources | Work | Actual work |
| --- | --- | --- | --- | --- | --- | --- | --- | --- | --- | --- | --- |
| 55 | 1.2.3.3 | **Must magazine_ranking bài viết được yêu thích** | 4.12d | 2015-01-26 19:30 A | 2015-02-07 09:30 A |  | 100% |  | NgocLQ | 33h | 33h |
| 56 | 1.2.3.3.1 | Code PHP | 2h | 2015-01-26 19:30 A | 2015-01-27 19:00 A | 50 | 100% |  |  |  |  |
| 57 | 1.2.3.3.2 | Template | 3h | 2015-01-27 19:00 A | 2015-01-28 19:30 A | 56 | 100% |  |  |  |  |
| 58 | 1.2.3.3.3 | Viet test case | 2h | 2015-01-31 08:00 A | 2015-01-31 10:00 A | 51 | 100% |  |  |  |  |
| 59 | 1.2.3.3.4 | Test IE | 2h | 2015-02-05 19:30 A | 2015-02-06 19:00 A | 54 | 100% |  |  |  |  |
| 60 | 1.2.3.3.5 | Test Android | 2h | 2015-02-06 19:00 A | 2015-02-07 08:30 A | 59 | 100% |  |  |  |  |
| 61 | 1.2.3.3.6 | Fix bug & confirm bug | 1h | 2015-02-07 08:30 A | 2015-02-07 09:30 A | 60 | 100% |  |  |  |  |
| 62 | 1.2.3.4 | **Must magazine_List chuyên gia・Tác giả** | 2.69d | 2015-01-23 18:00 A | 2015-01-30 19:00 A |  | 100% |  | TuanPM | 21.5h | 21.5h |
| 63 | 1.2.3.4.1 | Code PHP | 2h | 2015-01-23 18:00 A | 2015-01-23 20:00 A |  | 100% | start no earlier than 2015-01-23 18:00 |  |  |  |
| 64 | 1.2.3.4.2 | Template | 2h | 2015-01-23 20:00 A | 2015-01-24 09:30 A | 63 | 100% |  |  |  |  |
| 65 | 1.2.3.4.3 | Viet test case | 2h | 2015-01-26 19:30 A | 2015-01-27 19:00 A | 78 | 100% |  |  |  |  |
| 66 | 1.2.3.4.4 | Test IE | 2h | 2015-01-29 18:00 A | 2015-01-29 20:00 A | 79 | 100% |  |  |  |  |
| 67 | 1.2.3.4.5 | Test Android | 1h | 2015-01-29 20:00 A | 2015-01-30 18:30 A | 66 | 100% |  |  |  |  |
| 68 | 1.2.3.4.6 | Fix bug & confirm bug | 0.5h | 2015-01-30 18:30 A | 2015-01-30 19:00 A | 67 | 100% |  |  |  |  |
| 69 | 1.2.3.5 | **Must magazine_List các bài viêt của chuyên gia・tác giả** | 2.62d | 2015-01-24 09:30 A | 2015-01-31 10:00 A |  | 100% |  | TuanPM | 21h | 21h |
| 70 | 1.2.3.5.1 | Code PHP | 2h | 2015-01-24 09:30 A | 2015-01-24 11:30 A | 64 | 100% |  |  |  |  |
| 71 | 1.2.3.5.2 | Template | 2h | 2015-01-24 11:30 A | 2015-01-24 14:30 A | 70 | 100% |  |  |  |  |
| 72 | 1.2.3.5.3 | Viet test case | 2h | 2015-01-27 19:00 A | 2015-01-28 18:30 A | 65 | 100% |  |  |  |  |
| 73 | 1.2.3.5.4 | Test IE | 2h | 2015-01-30 19:00 A | 2015-01-31 08:30 A | 68 | 100% |  |  |  |  |
| 74 | 1.2.3.5.5 | Test Android | 1h | 2015-01-31 08:30 A | 2015-01-31 09:30 A | 73 | 100% |  |  |  |  |
| 75 | 1.2.3.5.6 | Fix bug & confirm bug | 0.5h | 2015-01-31 09:30 A | 2015-01-31 10:00 A | 74 | 100% |  |  |  |  |
| 76 | 1.2.3.6 | **Menu phải** | 2.75d | 2015-01-24 14:30 A | 2015-01-31 16:00 A |  | 100% |  | TuanPM | 22h | 22h |
| 77 | 1.2.3.6.1 | Code PHP | 2h | 2015-01-24 14:30 A | 2015-01-24 16:30 A | 71 | 100% |  |  |  |  |
| 78 | 1.2.3.6.2 | Template | 2h | 2015-01-24 16:30 A | 2015-01-26 19:30 A | 77 | 100% |  |  |  |  |
| 79 | 1.2.3.6.3 | Viet test case | 2h | 2015-01-28 18:30 A | 2015-01-28 20:30 A | 72 | 100% |  |  |  |  |
| 80 | 1.2.3.6.4 | Test IE | 2h | 2015-01-31 10:00 A | 2015-01-31 12:00 A | 75 | 100% |  |  |  |  |
| 81 | 1.2.3.6.5 | Test Android | 2h | 2015-01-31 13:00 A | 2015-01-31 15:00 A | 80 | 100% |  |  |  |  |
| 82 | 1.2.3.6.6 | Fix bug & confirm bug | 1h | 2015-01-31 15:00 A | 2015-01-31 16:00 A | 81 | 100% |  |  |  |  |

| ID | WBS | Task | Duration | Start | Finish | Predecessors | Complete | Constraint | Resources | Work | Actual work |
| --- | --- | --- | --- | --- | --- | --- | --- | --- | --- | --- | --- |
| 83 | 1.2.4 | **Chuyên đề** | 3.5d | 2015-01-23 18:00 A | 2015-01-31 14:00 A |  | 100% |  | LuanND | 28h | 28h |
| 84 | 1.2.4.1 | **Top list chuyên đề** | 2.88d | 2015-01-23 18:00 A | 2015-01-30 20:30 A |  | 100% |  |  |  |  |
| 85 | 1.2.4.1.1 | Code PHP | 2h | 2015-01-23 18:00 A | 2015-01-23 20:00 A |  | 100% | start no earlier than 2015-01-23 18:00 |  |  |  |
| 86 | 1.2.4.1.2 | Template | 3h | 2015-01-23 20:00 A | 2015-01-24 10:30 A | 85 | 100% |  |  |  |  |
| 87 | 1.2.4.1.3 | Viet test case | 2h | 2015-01-27 18:00 A | 2015-01-27 20:00 A | 130 | 100% |  |  |  |  |
| 88 | 1.2.4.1.4 | Test IE | 2h | 2015-01-29 18:00 A | 2015-01-29 20:00 A | 131 | 100% |  |  |  |  |
| 89 | 1.2.4.1.5 | Test Android | 2h | 2015-01-29 20:00 A | 2015-01-30 19:30 A | 88 | 100% |  |  |  |  |
| 90 | 1.2.4.1.6 | Fix bug & confirm bug | 1h | 2015-01-30 19:30 A | 2015-01-30 20:30 A | 89 | 100% |  |  |  |  |
| 91 | 1.2.4.2 | **Bài viết chi tiết chuyên đề** | 2.88d | 2015-01-24 10:30 A | 2015-01-31 14:00 A |  | 100% |  |  |  |  |
| 92 | 1.2.4.2.1 | Code PHP | 2h | 2015-01-24 10:30 A | 2015-01-24 13:30 A | 86 | 100% |  |  |  |  |
| 93 | 1.2.4.2.2 | Template | 3h | 2015-01-24 13:30 A | 2015-01-24 16:30 A | 92 | 100% |  |  |  |  |
| 94 | 1.2.4.2.3 | Viet test case | 2h | 2015-01-27 20:00 A | 2015-01-28 19:30 A | 87 | 100% |  |  |  |  |
| 95 | 1.2.4.2.4 | Test IE | 2h | 2015-01-31 08:00 A | 2015-01-31 10:00 A | 90 | 100% |  |  |  |  |
| 96 | 1.2.4.2.5 | Test Android | 2h | 2015-01-31 10:00 A | 2015-01-31 12:00 A | 95 | 100% |  |  |  |  |
| 97 | 1.2.4.2.6 | Fix bug & confirm bug | 1h | 2015-01-31 13:00 A | 2015-01-31 14:00 A | 96 | 100% |  |  |  |  |
| 98 | 1.2.5 | **Hội viên** | 4.62d | 2015-01-22 18:00 A | 2015-02-03 19:00 A |  | 100% |  | TinhBV; DungPT | 168.5h | 168.5h |
| 99 | 1.2.5.1 | **Màn hình đăng ký hội viên** | 2.88d | 2015-01-23 18:00 A | 2015-01-30 20:30 A |  | 100% |  | TinhBV | 23h | 23h |
| 100 | 1.2.5.1.1 | Code PHP | 4h | 2015-01-23 18:00 A | 2015-01-24 09:30 A |  | 100% | start no earlier than 2015-01-23 18:00 |  |  |  |
| 101 | 1.2.5.1.2 | Template | 3h | 2015-01-24 09:30 A | 2015-01-24 13:30 A | 100 | 100% |  |  |  |  |
| 102 | 1.2.5.1.3 | Viet test case | 3h | 2015-01-24 16:30 A | 2015-01-26 20:30 A | 108 | 100% |  |  |  |  |
| 103 | 1.2.5.1.4 | Test IE | 3h | 2015-01-27 20:00 A | 2015-01-28 20:30 A | 109 | 100% |  |  |  |  |
| 104 | 1.2.5.1.5 | Test Android | 3h | 2015-01-29 18:00 A | 2015-01-30 18:30 A | 103 | 100% |  |  |  |  |
| 105 | 1.2.5.1.6 | Fix bug & confirm bug | 2h | 2015-01-30 18:30 A | 2015-01-30 20:30 A | 104 | 100% |  |  |  |  |
| 106 | 1.2.5.2 | **Đăng ký ＆Login** | 2.31d | 2015-01-24 13:30 A | 2015-01-31 10:30 A |  | 100% |  | TinhBV | 18.5h | 18.5h |
| 107 | 1.2.5.2.1 | Code PHP | 2h | 2015-01-24 13:30 A | 2015-01-24 15:30 A | 101 | 100% |  |  |  |  |
| 108 | 1.2.5.2.2 | Template | 2h | 2015-01-24 14:30 A | 2015-01-24 16:30 A | 107 | 100% |  |  |  |  |
| 109 | 1.2.5.2.3 | Viet test case | 2h | 2015-01-27 18:00 A | 2015-01-27 20:00 A | 102 | 100% |  |  |  |  |
| 110 | 1.2.5.2.4 | Test IE | 1h | 2015-01-31 08:00 A | 2015-01-31 09:00 A | 105 | 100% |  |  |  |  |
| 111 | 1.2.5.2.5 | Test Android | 1h | 2015-01-31 09:00 A | 2015-01-31 10:00 A | 110 | 100% |  |  |  |  |
| 112 | 1.2.5.2.6 | Fix bug & confirm bug | 0.5h | 2015-01-31 10:00 A | 2015-01-31 10:30 A | 111 | 100% |  |  |  |  |

| ID | WBS | Task | Duration | Start | Finish | Predecessors | Complete | Resources | Work | Actual work |
| --- | --- | --- | --- | --- | --- | --- | --- | --- | --- | --- |
| 113 | 1.2.5.3 | **Profile** | 3.5d | 2015-01-22 18:00 A | 2015-01-31 10:30 A |  | 100% | DungPT | 28h | 28h |
| 114 | 1.2.5.3.1 | Code PHP | 4h | 2015-01-22 18:00 A | 2015-01-23 19:30 A |  | 100% |  |  |  |
| 115 | 1.2.5.3.2 | Template | 3h | 2015-01-23 19:30 A | 2015-01-24 10:00 A | 114 | 100% |  |  |  |
| 116 | 1.2.5.3.3 | Viet test case | 3h | 2015-01-26 19:00 A | 2015-01-27 19:30 A | 122 | 100% |  |  |  |
| 117 | 1.2.5.3.4 | Test IE | 3h | 2015-01-28 20:00 A | 2015-01-29 20:30 A | 123 | 100% |  |  |  |
| 118 | 1.2.5.3.5 | Test Android | 3h | 2015-01-30 18:00 A | 2015-01-31 08:30 A | 117 | 100% |  |  |  |
| 119 | 1.2.5.3.6 | Fix bug & confirm bug | 2h | 2015-01-31 08:30 A | 2015-01-31 10:30 A | 118 | 100% |  |  |  |
| 120 | 1.2.5.4 | **Màn hình Admin** | 3.75d | 2015-01-24 10:00 A | 2015-02-03 19:00 A |  | 100% | DungPT | 30h | 30h |
| 121 | 1.2.5.4.1 | Code PHP | 4h | 2015-01-24 10:00 A | 2015-01-24 15:00 A | 115 | 100% |  |  |  |
| 122 | 1.2.5.4.2 | Template | 3h | 2015-01-24 15:00 A | 2015-01-26 19:00 A | 121 | 100% |  |  |  |
| 123 | 1.2.5.4.3 | Viet test case | 3h | 2015-01-27 19:30 A | 2015-01-28 20:00 A | 116 | 100% |  |  |  |
| 124 | 1.2.5.4.4 | Test IE | 3h | 2015-01-31 10:30 A | 2015-01-31 14:30 A | 119 | 100% |  |  |  |
| 125 | 1.2.5.4.5 | Test Android | 3h | 2015-01-31 14:30 A | 2015-02-02 18:30 A | 124 | 100% |  |  |  |
| 126 | 1.2.5.4.6 | Fix bug & confirm bug | 3h | 2015-02-02 18:30 A | 2015-02-03 19:00 A | 125 | 100% |  |  |  |
| 127 | 1.2.6 | **Khac** | 4.12d | 2015-01-22 18:00 A | 2015-01-31 16:30 A |  | 100% | LuanND | 33h | 33h |
| 128 | 1.2.6.1 | **Hỏi đáp** | 2.56d | 2015-01-24 16:30 A | 2015-01-31 16:30 A |  | 100% |  |  |  |
| 129 | 1.2.6.1.1 | Code PHP | 1h | 2015-01-24 16:30 A | 2015-01-26 18:30 A | 93 | 100% |  |  |  |
| 130 | 1.2.6.1.2 | Template | 2h | 2015-01-26 18:30 A | 2015-01-26 20:30 A | 129 | 100% |  |  |  |
| 131 | 1.2.6.1.3 | Viet test case | 1h | 2015-01-28 19:30 A | 2015-01-28 20:30 A | 94 | 100% |  |  |  |
| 132 | 1.2.6.1.4 | Test IE | 1h | 2015-01-31 14:00 A | 2015-01-31 15:00 A | 97 | 100% |  |  |  |
| 133 | 1.2.6.1.5 | Test Android | 1h | 2015-01-31 15:00 A | 2015-01-31 16:00 A | 132 | 100% |  |  |  |
| 134 | 1.2.6.1.6 | Fix bug & confirm bug | 0.5h | 2015-01-31 16:00 A | 2015-01-31 16:30 A | 133 | 100% |  |  |  |
| 135 | 1.2.6.2 | **Chi tiết qui tắc sử dụng** | 0.12d | 2015-01-22 18:00 A | 2015-01-22 19:00 A |  | 100% |  |  |  |
| 136 | 1.2.6.2.1 | Code PHP | 0.5h | 2015-01-22 18:00 A | 2015-01-22 18:30 A |  | 100% |  |  |  |
| 137 | 1.2.6.2.2 | Template | 1h | 2015-01-22 18:00 A | 2015-01-22 19:00 A |  | 100% |  |  |  |
| 138 | 1.2.6.2.3 | Viet test case | 0.5h | 2015-01-22 18:00 A | 2015-01-22 18:30 A |  | 100% |  |  |  |
| 139 | 1.2.6.2.4 | Test IE | 0.5h | 2015-01-22 18:00 A | 2015-01-22 18:30 A |  | 100% |  |  |  |
| 140 | 1.2.6.2.5 | Test Android | 0.5h | 2015-01-22 18:00 A | 2015-01-22 18:30 A |  | 100% |  |  |  |
| 141 | 1.2.6.2.6 | Fix bug & confirm bug | 0.5h | 2015-01-22 18:00 A | 2015-01-22 18:30 A |  | 100% |  |  |  |

| ID | WBS | Task | Duration | Start | Finish | Predecessors | Complete | Constraint | Resources | Work | Actual work |
| --- | --- | --- | --- | --- | --- | --- | --- | --- | --- | --- | --- |
| 142 | 1.2.6.3 | **Chi tiết thông tin cá nhân** | 0.12d | 2015-01-22 18:00 A | 2015-01-22 19:00 A |  | 100% |  |  |  |  |
| 143 | 1.2.6.3.1 | Code PHP | 0.5h | 2015-01-22 18:00 A | 2015-01-22 18:30 A |  | 100% |  |  |  |  |
| 144 | 1.2.6.3.2 | Template | 1h | 2015-01-22 18:00 A | 2015-01-22 19:00 A |  | 100% |  |  |  |  |
| 145 | 1.2.6.3.3 | Viet test case | 0.5h | 2015-01-22 18:00 A | 2015-01-22 18:30 A |  | 100% |  |  |  |  |
| 146 | 1.2.6.3.4 | Test IE | 0.5h | 2015-01-22 18:00 A | 2015-01-22 18:30 A |  | 100% |  |  |  |  |
| 147 | 1.2.6.3.5 | Test Android | 0.5h | 2015-01-22 18:00 A | 2015-01-22 18:30 A |  | 100% |  |  |  |  |
| 148 | 1.2.6.3.6 | Fix bug & confirm bug | 0.5h | 2015-01-22 18:00 A | 2015-01-22 18:30 A |  | 100% |  |  |  |  |
| 149 | 1.2.6.4 | **Dành cho người mới bắt đầu** | 0.12d | 2015-01-22 18:00 A | 2015-01-22 19:00 A |  | 100% |  |  |  |  |
| 150 | 1.2.6.4.1 | Code PHP | 0.5h | 2015-01-22 18:00 A | 2015-01-22 18:30 A |  | 100% |  |  |  |  |
| 151 | 1.2.6.4.2 | Template | 1h | 2015-01-22 18:00 A | 2015-01-22 19:00 A |  | 100% |  |  |  |  |
| 152 | 1.2.6.4.3 | Viet test case | 0.5h | 2015-01-22 18:00 A | 2015-01-22 18:30 A |  | 100% |  |  |  |  |
| 153 | 1.2.6.4.4 | Test IE | 0.5h | 2015-01-22 18:00 A | 2015-01-22 18:30 A |  | 100% |  |  |  |  |
| 154 | 1.2.6.4.5 | Test Android | 0.5h | 2015-01-22 18:00 A | 2015-01-22 18:30 A |  | 100% |  |  |  |  |
| 155 | 1.2.6.4.6 | Fix bug & confirm bug | 0.5h | 2015-01-22 18:00 A | 2015-01-22 18:30 A |  | 100% |  |  |  |  |
| 156 | 1.3 | Nop hang lan 1 | 2h | 2015-02-07 15:00 A | 2015-02-07 17:00 A |  | 100% | finish no earlier than 2015-02-07 17:00 | DungBQ | 2h | 2h |
| 157 | 1.4 | **MS02** | 2.62d | 2015-02-09 18:00 A | 2015-02-16 18:30 A |  | 100% |  |  | 100h | 100h |
| 158 | 1.4.1 | **Test tren Firfox** | 1d | 2015-02-09 18:00 A | 2015-02-12 18:30 A |  | 100% |  |  | 38h | 38h |
| 159 | 1.4.1.1 | Top page | 4h | 2015-02-09 18:00 A | 2015-02-10 19:30 A | 156 | 100% |  | ThuanDH; HuyHX | 8h | 8h |
| 160 | 1.4.1.2 | Must news | 4h | 2015-02-10 19:30 A | 2015-02-12 18:30 A | 159 | 100% |  | ThuanDH; HuyHX | 8h | 8h |
| 161 | 1.4.1.3 | Must magazine | 4h | 2015-02-09 18:00 A | 2015-02-10 19:30 A | 156 | 100% |  | NgocLQ; TuanPM | 8h | 8h |
| 162 | 1.4.1.4 | Chuyên đề | 4h | 2015-02-09 18:00 A | 2015-02-10 19:30 A | 156 | 100% |  | LuanND | 4h | 4h |
| 163 | 1.4.1.5 | Hội viên | 4h | 2015-02-09 18:00 A | 2015-02-10 19:30 A | 156 | 100% |  | TinhBV; DungPT | 8h | 8h |
| 164 | 1.4.1.6 | Khac | 2h | 2015-02-10 19:30 A | 2015-02-11 19:00 A | 162 | 100% |  | LuanND | 2h | 2h |
| 165 | 1.4.2 | **Test tren Chrome** | 1d | 2015-02-10 19:30 A | 2015-02-13 20:00 A |  | 100% |  |  | 28h | 28h |
| 166 | 1.4.2.1 | Top page | 2h | 2015-02-12 18:30 A | 2015-02-12 20:30 A | 160 | 100% |  | ThuanDH; HuyHX | 4h | 4h |
| 167 | 1.4.2.2 | Must news | 2h | 2015-02-13 18:00 A | 2015-02-13 20:00 A | 166 | 100% |  | ThuanDH; HuyHX | 4h | 4h |
| 168 | 1.4.2.3 | Must magazine | 4h | 2015-02-10 19:30 A | 2015-02-12 18:30 A | 161 | 100% |  | NgocLQ; TuanPM | 8h | 8h |
| 169 | 1.4.2.4 | Chuyên đề | 2h | 2015-02-11 19:00 A | 2015-02-12 18:30 A | 164 | 100% |  | LuanND | 2h | 2h |
| 170 | 1.4.2.5 | Hội viên | 4h | 2015-02-10 19:30 A | 2015-02-12 18:30 A | 163 | 100% |  | TinhBV; DungPT | 8h | 8h |
| 171 | 1.4.2.6 | Khac | 2h | 2015-02-12 18:30 A | 2015-02-12 20:30 A | 169 | 100% |  | LuanND | 2h | 2h |

| ID | WBS | Task | Duration | Start | Finish | Predecessors | Complete | Constraint | Resources | Work | Actual work |
| --- | --- | --- | --- | --- | --- | --- | --- | --- | --- | --- | --- |
| 172 | 1.4.3 | **Test tren iOS** | 1.12d | 2015-02-12 18:30 A | 2015-02-14 13:30 A |  | 100% |  |  | 30h | 30h |
| 173 | 1.4.3.1 | Top page | 2h | 2015-02-13 20:00 A | 2015-02-14 09:30 A | 167 | 100% |  | ThuanDH; HuyHX | 4h | 4h |
| 174 | 1.4.3.2 | Must news | 3h | 2015-02-14 09:30 A | 2015-02-14 13:30 A | 173 | 100% |  | ThuanDH; HuyHX | 6h | 6h |
| 175 | 1.4.3.3 | Must magazine | 4h | 2015-02-12 18:30 A | 2015-02-13 20:00 A | 168 | 100% |  | NgocLQ; TuanPM | 8h | 8h |
| 176 | 1.4.3.4 | Chuyên đề | 2h | 2015-02-13 18:00 A | 2015-02-13 20:00 A | 171 | 100% |  | LuanND | 2h | 2h |
| 177 | 1.4.3.5 | Hội viên | 4h | 2015-02-12 18:30 A | 2015-02-13 20:00 A | 170 | 100% |  | TinhBV; DungPT | 8h | 8h |
| 178 | 1.4.3.6 | Khac | 2h | 2015-02-13 20:00 A | 2015-02-14 09:30 A | 176 | 100% |  | LuanND | 2h | 2h |
| 179 | 1.4.4 | Fix bug | 4h | 2015-02-14 13:30 A | 2015-02-16 18:30 A | 172 | 100% |  | All | 4h | 4h |
| 180 | 1.5 | Nop hang lan 2 | 2h | 2015-02-17 18:00 A | 2015-02-17 20:00 A |  | 100% | finish no earlier than 2015-02-17 20:00 | DungBQ | 2h | 2h |
