# Project_KM

Schedule from MS Project, 2015-03-05 to 2015-03-20, A marks actual dates.

## Calendars

- Standard: Mon-Fri 08:30-12:00, 13:00-17:30; Sat-Sun off.

## Resources

| Resource |
| --- |
| TuanNT |
| DungBQ |

## Schedule

| ID | WBS | Task | Duration | Start | Finish | Predecessors | Complete | Remaining | Total slack | Constraint | Resources | Work | Actual work |
| --- | --- | --- | --- | --- | --- | --- | --- | --- | --- | --- | --- | --- | --- |
| 1 | 1 | **KM Phase 2** | 11.62d | 2015-03-05 08:00 A | 2015-03-20 14:30 |  | 79% | 2.43d | 0d |  |  | 100.5h | 79.5h |
| 2 | 1.1 | **GD1** | 9.94d | 2015-03-05 08:00 A | 2015-03-18 17:00 A |  | 100% |  |  |  |  | 79.5h | 79.5h |
| 3 | 1.1.1 | **I. Code** | 8.94d | 2015-03-05 08:00 A | 2015-03-17 17:00 A |  | 100% |  |  |  |  | 36h | 36h |
| 4 | 1.1.1.1 | 1. Code màn hình index BBS | 3h | 2015-03-05 08:00 A | 2015-03-05 11:30 A |  | 100% |  |  | start no later than 2015-03-05 08:00 | TuanNT | 3h | 3h |
| 5 | 1.1.1.2 | 2. Code màn hình chi tiết BBS + Comment | 3h | 2015-03-05 11:30 A | 2015-03-17 17:00 A | 4 | 100% |  |  | as late as possible | TuanNT | 3h | 3h |
| 6 | 1.1.1.3 | 3. Code post BBS mới | 3h | 2015-03-05 08:30 A | 2015-03-05 11:30 A | 5 | 100% |  |  |  | TuanNT | 3h | 3h |
| 7 | 1.1.1.4 | 4. Code màn hình category BBS | 3h | 2015-03-06 09:30 A | 2015-03-06 13:30 A | 6 | 100% |  |  |  | TuanNT | 3h | 3h |
| 8 | 1.1.1.5 | 5. Code list thông tin seminar và search | 4h | 2015-03-06 13:30 A | 2015-03-06 17:30 A | 7 | 100% |  |  |  | TuanNT | 4h | 4h |
| 9 | 1.1.1.6 | 6. Code chi tiết seminar | 3h | 2015-03-09 08:30 A | 2015-03-09 11:30 A | 8 | 100% |  |  |  | TuanNT | 3h | 3h |
| 10 | 1.1.1.7 | 7. Code màn hình apply đăng tải seminar | 3h | 2015-03-09 11:30 A | 2015-03-09 15:30 A | 9 | 100% |  |  |  | TuanNT | 3h | 3h |
| 11 | 1.1.1.8 | 8. Code màn hình dành cho người mới | 3h | 2015-03-09 15:30 A | 2015-03-10 09:30 A | 10 | 100% |  |  |  | TuanNT | 3h | 3h |
| 12 | 1.1.1.9 | 9. Code màn hình quy ước sử dụng | 2h | 2015-03-10 09:30 A | 2015-03-10 11:30 A | 11 | 100% |  |  |  | TuanNT | 2h | 2h |
| 13 | 1.1.1.10 | 10. Review code | 5h | 2015-03-10 11:30 A | 2015-03-10 17:30 A | 12 | 100% |  |  |  | DungBQ | 5h | 5h |
| 14 | 1.1.1.11 | 11. Update code | 4h | 2015-03-11 08:30 A | 2015-03-11 13:30 A | 13 | 100% |  |  | finish no later than 2015-03-11 17:00 | TuanNT | 4h | 4h |
| 15 | 1.1.2 | **II. Tạo testcase** | 2.12d | 2015-03-11 13:30 A | 2015-03-13 14:30 A |  | 100% |  |  |  |  | 17h | 17h |
| 16 | 1.1.2.1 | 1. Tạo test case màn hình index bbs | 0.38d | 2015-03-11 13:30 A | 2015-03-11 16:30 A | 14 | 100% |  |  | as late as possible | TuanNT | 3h | 3h |
| 17 | 1.1.2.2 | 2. Tạo testcase màn hình chi tiết BBS + Comment | 2h | 2015-03-11 16:30 A | 2015-03-12 09:30 A | 16 | 100% |  |  |  | TuanNT | 2h | 2h |
| 18 | 1.1.2.3 | 3. Tạo testcase post BBS mới | 3h | 2015-03-12 09:30 A | 2015-03-12 13:30 A | 17 | 100% |  |  |  | TuanNT | 3h | 3h |
| 19 | 1.1.2.4 | 4. Tạo testcase list thông tin seminar và search | 3h | 2015-03-12 13:30 A | 2015-03-12 16:30 A | 18 | 100% |  |  |  | TuanNT | 3h | 3h |
| 20 | 1.1.2.5 | 5. Tạo testcase chi tiết seminar | 2h | 2015-03-12 16:30 A | 2015-03-13 09:30 A | 19 | 100% |  |  |  | TuanNT | 2h | 2h |
| 21 | 1.1.2.6 | 6. Tạo testcase màn hình apply đăng tải seminar | 2h | 2015-03-13 09:30 A | 2015-03-13 11:30 A | 20 | 100% |  |  |  | TuanNT | 2h | 2h |
| 22 | 1.1.2.7 | 7. Tạo testcase màn hình dành cho người mới | 1h | 2015-03-13 11:30 A | 2015-03-13 13:30 A | 21 | 100% |  |  |  | TuanNT | 1h | 1h |
| 23 | 1.1.2.8 | 8. Tạo testcase quy ước sử dụng | 1h | 2015-03-13 13:30 A | 2015-03-13 14:30 A | 22 | 100% |  |  |  | TuanNT | 1h | 1h |
| 24 | 1.1.3 | **III. Test** | 1.56d | 2015-03-13 14:30 A | 2015-03-17 10:00 A |  | 100% |  |  |  |  | 12.5h | 12.5h |
| 25 | 1.1.3.1 | 1. Test màn hình index bbs | 2h | 2015-03-13 14:30 A | 2015-03-13 16:30 A | 23 | 100% |  |  |  | TuanNT | 2h | 2h |
| 26 | 1.1.3.2 | 2. Test màn hình chi tiết bbs + Comment | 1.5h | 2015-03-13 16:30 A | 2015-03-16 09:00 A | 25 | 100% |  |  |  | TuanNT | 1.5h | 1.5h |
| 27 | 1.1.3.3 | 3. Test post mới | 2h | 2015-03-16 09:00 A | 2015-03-16 11:00 A | 26 | 100% |  |  |  | TuanNT | 2h | 2h |
| 28 | 1.1.3.4 | 4. Test list thông tin seminar và search | 2h | 2015-03-16 11:00 A | 2015-03-16 14:00 A | 27 | 100% |  |  |  | TuanNT | 2h | 2h |
| 29 | 1.1.3.5 | 5. Test màn hình chi tiết seminar | 1.5h | 2015-03-16 14:00 A | 2015-03-16 15:30 A | 28 | 100% |  |  |  | TuanNT | 1.5h | 1.5h |
| 30 | 1.1.3.6 | 6. Test màn hình apply đăng tải seminar | 1.5h | 2015-03-16 15:30 A | 2015-03-16 17:00 A | 29 | 100% |  |  |  | TuanNT | 1.5h | 1.5h |
| 31 | 1.1.3.7 | 7. Test màn hình dành cho người mới | 1h | 2015-03-16 17:00 A | 2015-03-17 09:00 A | 30 | 100% |  |  |  | TuanNT | 1h | 1h |
| 32 | 1.1.3.8 | 8. Test màn hình quy ước sử dụng | 1h | 2015-03-17 09:00 A | 2015-03-17 10:00 A | 31 | 100% |  |  |  | TuanNT | 1h | 1h |

| ID | WBS | Task | Duration | Start | Finish | Predecessors | Complete | Total slack | Constraint | Resources | Work | Actual work |
| --- | --- | --- | --- | --- | --- | --- | --- | --- | --- | --- | --- | --- |
| 33 | 1.1.4 | **IV. Fixbug & confirm bug** | 0.75d | 2015-03-17 10:00 A | 2015-03-17 17:00 A |  | 100% |  |  |  | 6h | 6h |
| 34 | 1.1.4.1 | 1. Fixbug | 4h | 2015-03-17 10:00 A | 2015-03-17 15:00 A | 32 | 100% |  |  | TuanNT | 4h | 4h |
| 35 | 1.1.4.2 | 2. Confirm bug | 2h | 2015-03-17 15:00 A | 2015-03-17 17:00 A | 34 | 100% |  |  | TuanNT | 2h | 2h |
| 36 | 1.1.5 | V. Test màn hình police | 1d | 2015-03-17 17:00 A | 2015-03-18 17:00 A | 35 | 100% |  |  | TuanNT | 8h | 8h |
| 37 | 1.2 | **GD2** | 2.62d | 2015-03-18 08:30 | 2015-03-20 14:30 |  |  | 0d |  |  | 21h |  |
| 38 | 1.2.1 | **Chuc nang thoai hoi** | 0.38d | 2015-03-18 08:30 | 2015-03-18 11:30 |  |  | 0d |  |  | 3h |  |
| 39 | 1.2.1.1 | Code | 2h | 2015-03-18 08:30 | 2015-03-18 10:30 |  |  | 0d | start no earlier than 2015-03-18 08:30 | TuanNT | 2h |  |
| 40 | 1.2.1.2 | Test | 1h | 2015-03-18 10:30 | 2015-03-18 11:30 | 39 |  | 0d |  | TuanNT | 1h |  |
| 41 | 1.2.2 | **User** | 0.19d | 2015-03-18 11:30 | 2015-03-18 14:00 |  |  | 0d |  |  | 1.5h |  |
| 42 | 1.2.2.1 | Code | 1h | 2015-03-18 11:30 | 2015-03-18 13:30 | 40 |  | 0d |  | TuanNT | 1h |  |
| 43 | 1.2.2.2 | Test | 0.5h | 2015-03-18 13:30 | 2015-03-18 14:00 | 42 |  | 0d |  | TuanNT | 0.5h |  |
| 44 | 1.2.3 | **Chức năng upload file** | 2d | 2015-03-18 14:00 | 2015-03-20 14:00 |  |  | 0d |  |  | 16h |  |
| 45 | 1.2.3.1 | Code | 1d | 2015-03-18 14:00 | 2015-03-19 14:00 | 43 |  | 0d |  | TuanNT | 8h |  |
| 46 | 1.2.3.2 | Test | 1d | 2015-03-19 14:00 | 2015-03-20 14:00 | 45 |  | 0d |  | TuanNT | 8h |  |
| 47 | 1.2.4 | Nop hang | 0.5h | 2015-03-20 14:00 | 2015-03-20 14:30 | 46 |  | 0d |  | DungBQ | 0.5h |  |
